# SpartitoXML

How a schedule from MS Project changed from version to version. A marks actual dates.

## Version 1 (saved 2016-04-07)

| ID | WBS | Task | Duration | Start | Finish | Predecessors | Complete | Total float | Constraint |
| --- | --- | --- | --- | --- | --- | --- | --- | --- | --- |
| 1 | 1 | **Spartito XML** | 61d | 2016-02-25 A | 2016-05-19 |  | 27% |  |  |
| 2 | 1.1 | **applicazione desktop** | 22d | 2016-02-25 A | 2016-03-25 |  | 33% |  |  |
| 3 | 1.1.1 | **area utente** | 23d | 2016-02-25 A | 2016-03-28 |  | 34% | 38d |  |
| 4 | 1.1.1.1 | **sezione: registrazione tag** | 23d | 2016-02-25 A | 2016-03-28 |  | 46% | 38d |  |
| 5 | 1.1.1.1.1 | **Registratore** | 23d | 2016-02-25 A | 2016-03-28 |  | 46% | 38d |  |
| 6 | 1.1.1.1.1.1 | **Riconoscimento BPM** | 1d | 2016-02-25 | 2016-02-25 |  |  | 0d |  |
| 7 |  | BPM conosciuti | 1d | 2016-02-25 | 2016-02-25 |  |  | 60d |  |
| 8 |  | BPM tappati | 1d | 2016-02-25 | 2016-02-25 |  |  | 60d |  |
| 9 |  | Gestore Timer | 1d | 2016-02-25 | 2016-02-25 |  |  |  |  |
| 10 |  | Registrazione traccia | 1d | 2016-03-11 | 2016-03-11 | 40 |  | 49d |  |
| 11 | 1.1.1.1.1.3 | **Elaborazione Traccia** | 23d | 2016-02-25 A | 2016-03-28 |  | 55% | 38d |  |
| 12 |  | Riconoscere frequenza singole note | 12d | 2016-02-25 A | 2016-03-11 A |  | 100% |  | finish no earlier than 2016-03-11 |
| 13 |  | Riconoscere durata singole note | 4d | 2016-03-14 | 2016-03-17 | 12 |  | 45d | start no earlier than 2016-02-18 |
| 14 |  | Richiamare tutto all'interno del programma | 2d | 2016-03-18 | 2016-03-21 | 35, 12 |  | 37d | start no earlier than 2016-03-18 |
| 15 | 1.1.1.1.1.3.4 | **Scrittura File XML** | 4d | 2016-03-23 | 2016-03-28 |  |  | 36d |  |
| 16 |  | Parser XML in base alla grammatica corretta | 2d | 2016-03-23 | 2016-03-24 | 14 |  | 36d | start no earlier than 2016-03-23 |
| 17 |  | Salvataggio in locale e inviata su server | 2d | 2016-03-25 | 2016-03-28 | 16 |  | 36d |  |
| 18 | 1.1.1.2 | **sezione: credenziali utente** | 3d | 2016-02-25 | 2016-02-29 |  |  | 58d |  |
| 19 |  | cambiamento email | 3d | 2016-02-25 | 2016-02-29 |  |  | 58d |  |
| 20 |  | cambiamento password | 3d | 2016-02-25 | 2016-02-29 |  |  | 58d |  |
| 21 | 1.1.1.3 | **sezione: visualizzazione tag** | 2d | 2016-02-25 | 2016-02-26 |  |  | 0d |  |
| 22 |  | Filtro in base genere | 1d | 2016-02-25 | 2016-02-25 |  |  |  |  |
| 23 |  | visualizza elenco di tutti i files xml sul server con link di download | 1d | 2016-02-26 | 2016-02-26 |  |  | 59d | start no earlier than 2016-02-25 |
| 24 |  | scarica zip con xml del tuo account | 1d | 2016-02-25 | 2016-02-25 |  |  | 60d |  |
| 25 | 1.1.2 | **area login (comunicazione con server)** | 12d | 2016-03-03 | 2016-03-18 |  | 17% |  |  |
| 26 |  | login (implementazione) | 2d | 2016-03-04 A | 2016-03-07 | 30 | 50% | 53d | start no earlier than 2016-03-04 |
| 27 |  | registrazione nuovo utente (implementazione) | 2d | 2016-03-08 | 2016-03-10 | 31 |  | 50.88d |  |
| 28 |  | password dimenticata (implementazione) | 2d | 2016-03-10 | 2016-03-14 | 32 |  | 48.75d |  |
| 29 | 1.1.3 | **GUI** | 9d | 2016-03-03 A | 2016-03-15 |  | 83% |  |  |
| 30 |  | sezione login | 1h | 2016-03-03 A | 2016-03-03 A |  | 100% |  | start no earlier than 2016-03-03 |
| 31 |  | nuovo registrazione nuovo utente | 1h | 2016-03-08 A | 2016-03-08 A | 26 | 100% |  |  |
| 32 |  | sezione password dimenticata | 1h | 2016-03-10 A | 2016-03-10 A | 27 | 100% |  |  |
| 33 |  | sezione credenziali | 1h | 2016-03-14 A | 2016-03-14 A | 28 | 100% |  |  |
| 34 |  | sezione registrazione | 1h | 2016-03-14 A | 2016-03-14 A | 33 | 100% |  |  |
| 35 |  | sezione visualizza | 1h | 2016-03-14 | 2016-03-14 | 34 |  | 40.38d |  |
| 37 | 1.2 | **applicazione web** | 22d | 2016-02-25 | 2016-03-25 |  | 20% |  |  |
| 38 | 1.2.1 | **area utente** | 9.75d | 2016-03-03 A | 2016-03-16 |  | 22% | 46d |  |
| 39 | 1.2.1.1 | **sezione: credenziali utente** | 2d | 2016-03-09 | 2016-03-10 |  |  | 49d |  |
| 40 |  | cambiamento email | 1d | 2016-03-10 | 2016-03-10 | 41 |  | 49d | start no earlier than 2016-02-25 |
| 41 |  | cambiamento password | 1d | 2016-03-09 | 2016-03-09 | 54 |  | 49d |  |
| 42 | 1.2.1.2 | **sezione: visualizzazione tag** | 3d | 2016-03-14 | 2016-03-16 |  |  | 0d |  |
| 43 |  | Filtro in base genere | 1d | 2016-03-14 | 2016-03-14 |  |  |  |  |
| 44 |  | visualizza elenco files xml, con data e ora di creazione e con link di download | 2d | 2016-03-14 | 2016-03-15 |  |  | 46d | start no earlier than 2016-03-14 |
| 45 |  | scarica zip con xml del tuo account | 1d | 2016-03-16 | 2016-03-16 | 44 |  | 46d |  |
| 46 | 1.2.1.3 | **area login** | 3.5d | 2016-03-03 A | 2016-03-08 |  | 67% | 49d |  |
| 47 |  | login (implementazione) | 1d | 2016-03-03 A | 2016-03-04 A | 51 | 100% |  |  |
| 48 |  | registrazione nuovo utente (implementazione) | 1d | 2016-03-04 A | 2016-03-07 A | 52 | 100% |  |  |
| 49 |  | password dimenticata | 1d | 2016-03-07 | 2016-03-08 | 53 |  | 49d |  |
| 50 | 1.2.2 | **GUI** | 7.75d | 2016-03-03 | 2016-03-14 |  |  |  |  |
| 51 |  | sezione login | 2h | 2016-03-03 | 2016-03-03 |  |  | 55.75d |  |
| 52 |  | nuovo registrazione nuovo utente | 2h | 2016-03-04 | 2016-03-04 | 47 |  | 54.5d | start no earlier than 2016-03-03 |
| 53 |  | sezione password dimenticata | 2h | 2016-03-07 | 2016-03-07 | 48 |  | 49d |  |
| 54 |  | sezione credenziali | 2h | 2016-03-08 | 2016-03-08 | 49 |  | 49d |  |
| 55 |  | sezione visualizza | 2h | 2016-03-09 | 2016-03-09 |  |  | 51.75d | start no earlier than 2016-03-09 |
| 58 | 1.3 | **server** | 13d | 2016-03-19 | 2016-04-05 |  |  |  |  |
| 59 |  | Ricezione - Risposta Login | 2d | 2016-03-29 | 2016-03-30 | 17 |  | 36d |  |
| 60 |  | Ricezione Iscrizione Nuovo Utente | 1d? | 2016-03-19 | 2016-03-19 |  |  |  |  |
| 61 |  | Modifica credenziali | 1d? | 2016-03-19 | 2016-03-19 |  |  |  |  |
| 62 |  | Ricezione - Risposta Visualizzazione files | 1d? | 2016-03-19 | 2016-03-19 |  |  |  |  |

## Version 2 (saved 2016-04-21)

Note of the change: WBS Aggiornata

Last finish stays 2016-05-19.

Changed:

| ID | Task | Total float | Other |
| --- | --- | --- | --- |
| 47 | login (implementazione) |  | resources larovere vittorio → larovere vittorio; morisco gabriele |
| 48 | registrazione nuovo utente (implementazione) |  | resources larovere vittorio → larovere vittorio; morisco gabriele |
| 51 | sezione login | 55.75d → 7.5d | resources morisco gabriele → morisco gabriele; larovere vittorio |
| 52 | nuovo registrazione nuovo utente |  | resources morisco gabriele → larovere vittorio |
| 53 | sezione password dimenticata | 49d → 5d | resources morisco gabriele → larovere vittorio |

## Version 3 (saved 2016-05-12)

Last finish 2016-05-19 → 2016-06-03 (+15d).

Removed: 7 BPM conosciuti; 8 BPM tappati

Changed:

| ID | Task | Start | Finish | Duration | Complete | Total float | Predecessors | Other |
| --- | --- | --- | --- | --- | --- | --- | --- | --- |
| 1 | **Spartito XML** |  | 2016-05-19 → 2016-06-03 (+15d) | 61d → 71.5d | 27% → 18% |  |  |  |
| 2 | **applicazione desktop** |  | 2016-03-25 → 2016-05-20 (+56d) | 22d → 62d | 33% → 44% |  |  |  |
| 3 | **area utente** |  | 2016-03-28 → 2016-04-19 (+22d) | 23d → 39d | 34% → 35% | 38d → 23d |  |  |
| 4 | **sezione: registrazione tag** |  | 2016-03-28 → 2016-04-19 (+22d) | 23d → 39d | 46% → 48% | 38d → 23d |  |  |
| 5 | **Registratore** |  | 2016-03-28 → 2016-04-19 (+22d) | 23d → 39d | 46% → 48% | 38d → 23d |  |  |
| 6 | **Riconoscimento BPM** |  | 2016-02-25 → 2016-02-26 (+1d) | 1d → 2d |  | 0d → 60d |  |  |
| 7 | Gestore Timer |  | 2016-02-25 → 2016-02-26 (+1d) | 1d → 2d |  | none → 60d |  | resources morisco gabriele → beggio luca |
| 8 | Registrazione traccia | 2016-03-11 → 2016-04-19 (+39d) | 2016-03-11 → 2016-04-19 (+39d) |  |  | 49d → 23d |  |  |
| 16 | **sezione: credenziali utente** | 2016-02-25 → 2016-03-16 (+20d) | 2016-02-29 → 2016-03-23 (+23d) | 3d → 6d |  | 58d → 42d |  |  |
| 17 | cambiamento email | 2016-02-25 → 2016-03-16 (+20d) | 2016-02-29 → 2016-03-18 (+18d) |  |  | 58d → 42d |  | constraint none → start no earlier than 2016-03-16 |
| 18 | cambiamento password | 2016-02-25 → 2016-03-21 (+25d) | 2016-02-29 → 2016-03-23 (+23d) |  |  | 58d → 42d | none → 17 |  |
| 23 | **area login (comunicazione con server)** |  |  |  | 17% → 92% |  |  |  |
| 24 | login (implementazione) |  | 2016-03-07 A |  | 50% → 100% | 53d → none |  |  |
| 25 | registrazione nuovo utente (implementazione) | 2016-03-08 A | 2016-03-10 A |  | 0% → 100% | 50.88d → none |  |  |
| 26 | password dimenticata (implementazione) | 2016-03-10 A |  |  | 0% → 75% | 48.75d → 4.75d |  |  |
| 34 | **applicazione web** |  | 2016-03-25 → 2016-06-03 (+70d) | 22d → 71.5d | 20% → 3% |  |  |  |
| 35 | **area utente** | 2016-03-03 A → 2016-03-14 A (+11d) | 2016-03-16 → 2016-06-02 (+78d) | 9.75d → 59d | 22% → 6% | 46d → 0.5d |  |  |
| 36 | **sezione: credenziali utente** | 2016-03-09 → 2016-04-15 (+37d) | 2016-03-10 → 2016-04-18 (+39d) |  |  | 49d → 23d |  |  |
| 37 | cambiamento email | 2016-03-10 → 2016-04-18 (+39d) | 2016-03-10 → 2016-04-18 (+39d) |  |  | 49d → 23d |  |  |
| 38 | cambiamento password | 2016-03-09 → 2016-04-15 (+37d) | 2016-03-09 → 2016-04-15 (+37d) |  |  | 49d → 23d |  |  |
| 39 | **sezione: visualizzazione tag** |  | 2016-03-16 → 2016-04-13 (+28d) | 3d → 23d |  | 0d → 20d |  |  |
| 40 | Filtro in base genere | 2016-03-14 → 2016-04-10 (+27d) | 2016-03-14 → 2016-04-13 (+30d) | 1d → 4d |  |  |  |  |
| 43 | **area login** | 2016-03-03 A → 2016-03-24 A (+21d) | 2016-03-08 → 2016-06-02 (+86d) | 3.5d → 51d | 67% → 9% | 49d → 0.5d |  |  |
| 44 | login (implementazione) | 2016-03-03 A → 2016-03-24 A (+21d) | 2016-03-04 A → 2016-05-18 (+75d) | 1d → 15d | 100% → 7% | none → 0d |  | constraint none → finish no earlier than 2016-04-07 |
| 45 | registrazione nuovo utente (implementazione) | 2016-03-04 A → 2016-04-07 A (+34d) | 2016-03-07 A → 2016-06-02 (+87d) | 1d → 6d | 100% → 17% | none → 0.5d |  | constraint none → finish no earlier than 2016-04-14 |
| 46 | password dimenticata | 2016-03-07 → 2016-04-08 (+32d) | 2016-03-08 → 2016-04-08 (+31d) |  |  | 49d → 23d |  |  |
| 47 | **GUI** | 2016-03-03 → 2016-03-31 (+28d) | 2016-03-14 → 2016-05-26 (+73d) | 7.75d → 41d |  |  |  |  |
| 48 | sezione login | 2016-03-03 → 2016-04-15 (+43d) | 2016-03-03 → 2016-04-28 (+56d) | 2h → 80h |  | 7.5d → 0d |  | constraint none → finish no earlier than 2016-04-28; resources morisco gabriele; larovere vittorio → larovere vittorio |
| 49 | nuovo registrazione nuovo utente | 2016-03-04 → 2016-05-19 (+76d) | 2016-03-04 → 2016-05-26 (+83d) | 2h → 48h |  | 54.5d → 0d |  | constraint start no earlier than 2016-03-03 → finish no earlier than 2016-04-08 |
| 50 | sezione password dimenticata | 2016-03-07 → 2016-03-31 (+24d) | 2016-03-07 → 2016-04-07 (+31d) | 2h → 48h |  | 5d → 23d | 45 → none | constraint none → finish no earlier than 2016-04-07 |
| 51 | sezione credenziali | 2016-03-08 → 2016-04-11 (+34d) | 2016-03-08 → 2016-04-14 (+37d) | 2h → 32h |  | 49d → 23d |  | constraint none → start no earlier than 2016-04-11 |
| 52 | sezione visualizza | 2016-03-09 → 2016-04-14 (+36d) | 2016-03-09 → 2016-04-21 (+43d) | 2h → 48h |  | 51.75d → 30.5d |  | constraint start no earlier than 2016-03-09 → finish no earlier than 2016-04-21 |
| 54 | Ricezione - Risposta Login |  |  |  |  | 36d → 4d |  | resources lanzi andrea → beggio luca |

## Version 4 (saved 2016-05-12)

Last finish stays 2016-06-03. Complete tasks 8 → 20.

Added:

| ID | Task | Duration | Start | Finish | Resources |
| --- | --- | --- | --- | --- | --- |
| 51 | AreaUtente - modifica password | 2d | 2016-05-25 A | 2016-05-26 | larovere vittorio; morisco gabriele |
| 59 | Recupero Password | 2d | 2016-04-13 A | 2016-04-14 | beggio luca |
| 61 | AreaUtente - ModificaPassword | 1d | 2016-05-17 | 2016-05-17 | beggio luca |
| 63 | Aggiungi File | 1d | 2016-04-18 | 2016-04-18 | beggio luca |

Removed: 6 Riconoscimento BPM

Changed:

| ID | Task | Start | Finish | Duration | Complete | Total float | Predecessors | Other |
| --- | --- | --- | --- | --- | --- | --- | --- | --- |
| 1 | **Spartito XML** |  |  |  | 18% → 65% |  |  |  |
| 2 | **applicazione desktop** |  | 2016-05-20 → 2016-06-02 (+13d) | 62d → 71d | 44% → 60% |  |  |  |
| 3 | **area utente** |  | 2016-04-19 → 2016-06-01 (+43d) | 39d → 70d | 35% → 60% | 23d → 1.5d |  |  |
| 4 | **sezione: registrazione tag** |  | 2016-04-19 → 2016-05-30 (+41d) | 39d → 67.5d | 48% → 64% | 23d → 4d |  |  |
| 5 | **Registratore** |  | 2016-04-19 → 2016-05-30 (+41d) | 39d → 67.5d | 48% → 64% | 23d → 4d |  |  |
| 6 | Gestore Timer | 2016-02-25 → 2016-04-20 A (+55d) | 2016-02-26 → 2016-04-21 A (+55d) |  | 0% → 100% | 60d → none |  | constraint none → start no earlier than 2016-04-20 |
| 7 | Registrazione traccia | 2016-04-19 → 2016-02-25 A (-54d) | 2016-04-19 → 2016-02-25 A (-54d) |  | 0% → 100% | 23d → none |  |  |
| 8 | **Elaborazione Traccia** |  | 2016-03-28 → 2016-05-30 (+63d) | 23d → 67.5d | 55% → 62% | 39d → 4d |  |  |
| 10 | Riconoscere durata singole note | 2016-03-14 → 2016-02-25 A (-18d) | 2016-03-17 → 2016-03-01 A (-16d) |  | 0% → 100% | 46d → none | 9 → none | constraint start no earlier than 2016-02-18 → start no earlier than 2016-02-24 |
| 11 | Richiamare tutto all'interno del programma | 2016-03-18 → 2016-03-02 A (-16d) | 2016-03-21 → 2016-03-02 A (-19d) | 2d → 1d | 0% → 100% | 5d → none |  | constraint start no earlier than 2016-03-18 → start no earlier than 2016-03-02 |
| 12 | **Scrittura File XML** | 2016-03-23 → 2016-03-21 A (-2d) | 2016-03-28 → 2016-05-30 (+63d) | 4d → 50.5d | 0% → 50% |  |  |  |
| 13 | Parser in music XML | 2016-03-23 → 2016-03-21 A (-2d) | 2016-03-24 → 2016-05-27 (+64d) | 2d → 50d | 0% → 50% |  |  | was named Parser XML in base alla grammatica corretta; constraint start no earlier than 2016-03-23 → start no earlier than 2016-03-19 |
| 14 | Inviare a server (richiama Web Method) | 2016-03-25 → 2016-05-30 (+66d) | 2016-03-28 → 2016-05-30 (+63d) | 2d → 0.5d |  |  |  | was named Salvataggio in locale e inviata su server; resources morisco gabriele → beggio luca |
| 15 | **sezione: credenziali utente (richiama WebMethod)** | 2016-03-16 → 2016-05-18 (+63d) | 2016-03-23 → 2016-05-18 (+56d) | 6d → 1d |  | 42d → none |  | was named sezione: credenziali utente |
| 16 | cambiamento email |  | 2016-03-18 → 2016-03-16 (-2d) | 3d → 0.5d |  | 42d → 56.5d |  |  |
| 17 | cambiamento password | 2016-03-21 → 2016-05-18 (+58d) | 2016-03-23 → 2016-05-18 (+56d) | 3d → 0.5d |  | 42d → 12d |  |  |
| 18 | **sezione: visualizzazione tag** | 2016-02-25 → 2016-05-30 (+95d) | 2016-02-26 → 2016-06-01 (+96d) | 2d → 3d |  | 0d → none |  |  |
| 19 | Filtro in base genere | 2016-02-25 → 2016-05-30 (+95d) | 2016-02-25 → 2016-05-30 (+95d) |  |  | none → 3.5d |  | resources morisco gabriele → lanzi andrea |
| 20 | visualizza elenco di tutti i files | 2016-02-26 → 2016-05-31 (+95d) | 2016-02-26 → 2016-05-31 (+95d) |  |  | 60d → 2.5d |  | was named visualizza elenco di tutti i files xml sul server con link di download; constraint start no earlier than 2016-02-25 → start no earlier than 2016-05-31 |
| 21 | scarica zip con xml del tuo account | 2016-02-25 → 2016-06-01 (+97d) | 2016-02-25 → 2016-06-01 (+97d) |  |  | 61d → 1.5d |  | constraint none → start no earlier than 2016-06-01 |
| 22 | **area login (richiama WebMethod)** | 2016-03-03 → 2016-05-12 A (+70d) | 2016-03-18 → 2016-05-16 (+59d) | 12d → 3d | 92% → 20% |  |  | was named area login (comunicazione con server) |
| 23 | login (implementazione) | 2016-03-04 A → 2016-05-12 A (+69d) | 2016-03-07 A → 2016-05-12 (+66d) | 2d → 0.5d | 100% → 20% | none → 16d | 27 → none |  |
| 24 | registrazione nuovo utente (implementazione) | 2016-03-08 A → 2016-05-12 A (+65d) | 2016-03-10 A → 2016-05-12 (+63d) | 2d → 0.5d | 100% → 20% | none → 16d | 28 → none |  |
| 25 | password dimenticata (implementazione) | 2016-03-10 A → 2016-05-13 A (+64d) | 2016-03-14 → 2016-05-13 (+60d) | 2d → 0.5d | 75% → 20% | 4.75d → 15d |  |  |
| 27 | sezione login |  |  |  |  |  |  | resources beggio luca → beggio luca; lanzi andrea |
| 28 | nuovo registrazione nuovo utente |  |  |  |  |  | 23 → none | resources beggio luca → beggio luca; lanzi andrea |
| 29 | sezione password dimenticata |  |  |  |  |  | 24 → none | resources beggio luca → beggio luca; lanzi andrea |
| 30 | sezione credenziali |  |  |  |  |  |  | resources beggio luca → beggio luca; lanzi andrea |
| 31 | sezione registrazione |  |  |  |  |  | 30 → none | resources beggio luca → beggio luca; lanzi andrea |
| 32 | sezione visualizza | 2016-03-14 → 2016-03-03 (-11d) | 2016-03-14 → 2016-03-03 (-11d) |  |  | 1.38d → 66.38d | 31 → none |  |
| 34 | **applicazione web** |  |  |  | 3% → 82% |  |  |  |
| 35 | **area utente** |  | 2016-06-02 → 2016-06-01 (-1d) | 59d → 58d | 6% → 88% | 0.5d → 1.5d |  |  |
| 36 | **sezione: credenziali utente** | 2016-04-15 → 2016-05-27 (+42d) | 2016-04-18 → 2016-06-01 (+44d) | 2d → 4d |  | 23d → none |  |  |
| 37 | cambiamento email | 2016-04-18 → 2016-05-30 (+42d) | 2016-04-18 → 2016-05-30 (+42d) |  |  | 23d → 3.5d |  |  |
| 38 | cambiamento password | 2016-04-15 → 2016-05-27 (+42d) | 2016-04-15 → 2016-05-27 (+42d) |  |  | 23d → 3.5d |  |  |
| 39 | **sezione: visualizzazione tag** | 2016-03-14 → 2016-04-10 (+27d) | 2016-04-13 → 2016-04-18 (+5d) | 23d → 7d | 0% → 93% | 20d → none |  |  |
| 40 | Filtro in base genere | 2016-04-10 A | 2016-04-13 A |  | 0% → 100% |  |  |  |
| 41 | visualizza elenco files | 2016-03-14 A | 2016-03-15 A |  | 0% → 100% | 47d → none |  | was named visualizza elenco files xml, con data e ora di creazione e con link di download |
| 42 | scarica zip con xml del tuo account | 2016-03-16 → 2016-04-16 A (+31d) | 2016-03-16 → 2016-04-18 (+33d) |  | 0% → 50% | 47d → 33.5d | 41 → none |  |
| 43 | **area login** |  | 2016-06-02 → 2016-05-30 (-3d) | 51d → 48d | 9% → 95% | 0.5d → 3.5d |  |  |
| 44 | login (implementazione) |  | 2016-05-18 A |  | 7% → 100% | 0d → none |  |  |
| 45 | registrazione nuovo utente (implementazione) |  | 2016-06-02 → 2016-05-30 (-3d) | 6d → 3d | 17% → 67% | 0.5d → 3.5d |  |  |
| 46 | password dimenticata (implementazione) | 2016-04-08 A | 2016-04-08 A |  | 0% → 100% | 23d → none |  | was named password dimenticata |
| 47 | **GUI** |  |  |  | 0% → 69% |  |  |  |
| 48 | sezione login | 2016-04-15 → 2016-04-04 A (-11d) | 2016-04-28 → 2016-04-29 A (+1d) | 80h → 3d | 0% → 100% | 0d → none |  | resources larovere vittorio → larovere vittorio; morisco gabriele |
| 49 | nuovo registrazione nuovo utente | 2016-05-19 → 2016-04-19 A (-30d) | 2016-05-26 → 2016-04-21 A (-35d) | 48h → 2d | 0% → 100% | 0d → none | 44 → none | resources larovere vittorio → larovere vittorio; morisco gabriele |
| 50 | sezione password dimenticata | 2016-03-31 → 2016-04-04 A (+4d) | 2016-04-07 → 2016-04-06 A (-1d) | 48h → 2d | 0% → 100% | 23d → none |  | resources larovere vittorio → larovere vittorio; morisco gabriele |
| 52 | AreaUtente - modifica email | 2016-04-11 → 2016-05-25 A (+44d) | 2016-04-14 → 2016-05-26 (+42d) | 32h → 2d |  | 23d → none |  | was named sezione credenziali; constraint start no earlier than 2016-04-11 → start no earlier than 2016-05-12; resources morisco gabriele → morisco gabriele; larovere vittorio |
| 53 | sezione visualizza | 2016-04-14 A | 2016-04-21 → 2016-04-22 A (+1d) | 48h → 2d | 0% → 100% | 30.5d → none |  | resources morisco gabriele → morisco gabriele; larovere vittorio |
| 56 | **Web Service (Web Method):** | 2016-03-19 → 2016-04-11 A (+23d) | 2016-04-05 → 2016-05-28 (+53d) | 13d → 36d | 0% → 44% |  |  | was named server |
| 57 | Login (implementazione) | 2016-03-29 → 2016-04-11 A (+13d) | 2016-03-30 → 2016-04-11 A (+12d) | 2d → 1d | 0% → 100% | 4d → none |  | was named Ricezione - Risposta Login; constraint none → start no earlier than 2016-04-11 |
| 58 | Iscrizione Nuovo Utente | 2016-03-19 → 2016-04-12 A (+24d) | 2016-03-19 → 2016-04-12 A (+24d) | 1d? → 1d | 0% → 100% |  |  | was named Ricezione Iscrizione Nuovo Utente; resources none → beggio luca |
| 60 | AreaUtente - ModificaEmail | 2016-03-19 → 2016-05-16 (+58d) | 2016-03-19 → 2016-05-16 (+58d) | 1d? → 1d |  |  |  | was named Modifica credenziali; resources none → beggio luca |
| 62 | Ricezione - Risposta Visualizzazione files | 2016-03-19 → 2016-04-15 (+27d) | 2016-03-19 → 2016-04-15 (+27d) | 1d? → 1d |  |  |  | resources none → beggio luca |

## Version 5 (saved 2016-05-13)

Last finish stays 2016-06-03. Complete tasks 20 → 21.

Added:

| ID | Task | Duration | Start | Finish | Resources |
| --- | --- | --- | --- | --- | --- |
| 65 | **Installazione Windows Server** | 1d | 2016-04-11 | 2016-04-11 |  |
| 66 | Installazione Web Server | 1d | 2016-04-11 | 2016-04-11 | lanzi andrea |
| 67 | Installazione Web Services | 1d | 2016-04-11 | 2016-04-11 | lanzi andrea |
| 68 | Installazione Database | 1d | 2016-04-11 | 2016-04-11 | lanzi andrea |

Changed:

| ID | Task | Start | Finish | Duration | Complete | Total float |
| --- | --- | --- | --- | --- | --- | --- |
| 1 | **Spartito XML** |  |  |  | 65% → 82% |  |
| 2 | **applicazione desktop** |  |  |  | 60% → 91% |  |
| 3 | **area utente** |  |  |  | 60% → 93% |  |
| 4 | **sezione: registrazione tag** |  | 2016-05-30 → 2016-05-16 (-14d) | 67.5d → 57.5d | 64% → 99% | 4d → 14d |
| 5 | **Registratore** |  | 2016-05-30 → 2016-05-16 (-14d) | 67.5d → 57.5d | 64% → 99% | 4d → 14d |
| 8 | **Elaborazione Traccia** |  | 2016-05-30 → 2016-05-16 (-14d) | 67.5d → 57.5d | 62% → 99% | 4d → 14d |
| 12 | **Scrittura File XML** |  | 2016-05-30 → 2016-05-16 (-14d) | 50.5d → 40.5d | 50% → 99% | 4d → 14d |
| 13 | Parser in music XML |  | 2016-05-27 → 2016-05-13 A (-14d) | 50d → 40d | 50% → 100% | 4d → none |
| 14 | Inviare a server (richiama Web Method) | 2016-05-30 → 2016-05-16 (-14d) | 2016-05-30 → 2016-05-16 (-14d) |  |  | 4d → 14d |
| 56 | **Web Service (Web Method):** |  |  |  | 44% → 32% |  |

## Version 6 (saved 2016-05-20)

Last finish stays 2016-06-03.

Changed:

| ID | Task | Start | Finish | Duration | Complete | Total float | Other |
| --- | --- | --- | --- | --- | --- | --- | --- |
| 1 | **Spartito XML** |  |  |  | 82% → 76% |  |  |
| 2 | **applicazione desktop** |  |  |  | 91% → 86% |  |  |
| 3 | **area utente** |  |  |  | 93% → 86% |  |  |
| 4 | **sezione: registrazione tag** |  | 2016-05-16 → 2016-05-27 (+11d) | 57.5d → 67d | 99% → 91% | 14d → 4.5d |  |
| 5 | **Registratore** |  | 2016-05-16 → 2016-05-27 (+11d) | 57.5d → 67d | 99% → 91% | 14d → 4.5d |  |
| 8 | **Elaborazione Traccia** |  | 2016-05-16 → 2016-05-27 (+11d) | 57.5d → 67d | 99% → 90% | 14d → 4.5d |  |
| 12 | **Scrittura File XML** |  | 2016-05-16 → 2016-05-27 (+11d) | 40.5d → 50d | 99% → 87% | 14d → 4.5d |  |
| 14 | Inviare a server (upload) | 2016-05-16 → 2016-05-20 (+4d) | 2016-05-16 → 2016-05-27 (+11d) | 0.5d → 6d |  | 14d → 4.5d | was named Inviare a server (richiama Web Method); constraint none → start no earlier than 2016-05-20 |
| 22 | **area login (richiama WebMethod)** | 2016-05-12 A → 2016-05-26 A (+14d) | 2016-05-16 → 2016-05-26 (+10d) | 3d → 1d | 20% → 80% |  |  |
| 23 | login (implementazione) | 2016-05-12 A → 2016-05-26 A (+14d) | 2016-05-12 → 2016-05-26 (+14d) | 0.5d → 1h | 20% → 80% | 16d → 6.38d | resources beggio luca → lanzi andrea |
| 24 | registrazione nuovo utente (implementazione) | 2016-05-12 A → 2016-05-26 A (+14d) | 2016-05-12 → 2016-05-26 (+14d) | 0.5d → 1h | 20% → 80% | 16d → 6.38d | resources beggio luca → lanzi andrea |
| 25 | password dimenticata (implementazione) | 2016-05-13 A → 2016-05-26 A (+13d) | 2016-05-13 → 2016-05-26 (+13d) | 0.5d → 1h | 20% → 80% | 15d → 6.38d | resources beggio luca → lanzi andrea |
| 32 | sezione visualizza |  |  |  |  |  | resources beggio luca → beggio luca; lanzi andrea |
| 56 | **Web Service (Web Method):** |  |  |  | 32% → 23% |  |  |
| 65 | **Installazione Windows Server** | 2016-04-11 → 2016-05-16 (+35d) | 2016-04-11 → 2016-05-23 (+42d) | 1d → 6d |  |  |  |
| 66 | Installazione Web Server | 2016-04-11 → 2016-05-16 (+35d) | 2016-04-11 → 2016-05-16 (+35d) |  |  |  |  |
| 67 | Installazione Web Services | 2016-04-11 → 2016-05-16 (+35d) | 2016-04-11 → 2016-05-19 (+38d) | 1d → 4d |  |  |  |
| 68 | Installazione Database | 2016-04-11 → 2016-05-20 (+39d) | 2016-04-11 → 2016-05-23 (+42d) | 1d → 2d |  |  |  |

## Version 7 (saved 2016-06-13)

Last finish 2016-06-03 → 2016-06-24 (+21d). Complete tasks 21 → 53.

Added:

| ID | Task | Duration | Start | Finish | Resources |
| --- | --- | --- | --- | --- | --- |
| 19 | Filtro in base al genere | 1d | 2016-05-30 A | 2016-05-30 A |  |
| 36 | **Ricerca utenti** | 4d | 2016-05-27 A | 2016-06-01 A |  |
| 37 | Visualizza utenti | 1d | 2016-05-27 A | 2016-05-27 A | morisco gabriele |
| 38 | Filtra per username | 1d | 2016-05-30 A | 2016-05-30 A | morisco gabriele |
| 39 | Filtra per nome e cognome | 1d | 2016-05-31 A | 2016-05-31 A | morisco gabriele |
| 40 | Visualizza profilo utente singolo | 0.5d | 2016-06-01 A | 2016-06-01 A | morisco gabriele |
| 49 | Filtro in base al titolo | 1d | 2016-06-03 A | 2016-06-03 A | morisco gabriele |
| 54 | Inserimento nel DB | 0.5d | 2016-03-24 A | 2016-03-24 A | larovere vittorio |
| 55 | Verifica disponibilità username & e-mail | 0.5d | 2016-05-19 A | 2016-05-19 A | morisco gabriele |
| 63 | Sezione biblioteca | 4d | 2016-04-06 A | 2016-04-11 A | morisco gabriele |
| 64 | Sezione elenco utenti | 3d | 2016-05-20 A | 2016-05-24 A | morisco gabriele |
| 65 | Profili utenti | 0.5d | 2016-06-01 A | 2016-06-01 A | morisco gabriele |
| 66 | Popup Login | 1d | 2016-06-10 | 2016-06-10 | larovere vittorio |
| 67 | Contatti | 1d | 2016-03-31 | 2016-03-31 | larovere vittorio |
| 68 | **Server:** | 44d | 2016-04-11 A | 2016-06-09 |  |
| 76 | Controllo nome file | 1d | 2016-06-08 A | 2016-06-08 A | beggio luca |
| 81 | Installazione servizio FTP | 1d | 2016-05-16 A | 2016-05-16 A | lanzi andrea |
| 82 | **Documentazione** | 1d | 2016-02-25 | 2016-02-25 |  |
| 83 | WBS | 1d | 2016-02-25 | 2016-02-25 | lanzi andrea |
| 84 | Depliant | 1d | 2016-02-25 | 2016-02-25 | larovere vittorio |
| 85 | Manuale Utente | 1d | 2016-02-25 | 2016-02-25 | larovere vittorio |
| 86 | Diagramma Classi | 1d | 2016-02-25 | 2016-02-25 | larovere vittorio |
| 87 | Risorse HW / SW | 1d | 2016-02-25 | 2016-02-25 | larovere vittorio |
| 88 | Casi D'uso | 1d | 2016-02-25 | 2016-02-25 | larovere vittorio |
| 89 | ER | 1d | 2016-02-25 | 2016-02-25 | lanzi andrea |

Removed: 63 Aggiungi File

Changed:

| ID | Task | Start | Finish | Duration | Complete | Total float | Other |
| --- | --- | --- | --- | --- | --- | --- | --- |
| 1 | **Spartito XML** |  | 2016-06-03 → 2016-06-24 (+21d) | 71.5d → 87d | 76% → 96% |  |  |
| 2 | **applicazione desktop** |  |  |  | 86% → 98% |  |  |
| 3 | **area utente** |  |  |  | 86% → 98% | 1.5d → 17d |  |
| 4 | **sezione: registrazione tag** |  |  |  | 91% → 99% | 4.5d → 0d |  |
| 5 | **Registratore** |  |  |  | 91% → 99% | 4.5d → 0d |  |
| 6 | Gestore Timer |  | 2016-04-21 A → 2016-04-21 |  | 100% → 80% |  |  |
| 8 | **Elaborazione Traccia** |  | 2016-05-27 A |  | 90% → 100% | 4.5d → none |  |
| 12 | **Scrittura File XML** |  | 2016-05-27 A |  | 87% → 100% | 4.5d → none |  |
| 14 | Inviare a server (upload) | 2016-05-20 A | 2016-05-27 A |  | 0% → 100% | 4.5d → none | resources beggio luca → lanzi andrea |
| 15 | **sezione: credenziali utente (richiama WebMethod)** |  | 2016-05-18 A |  | 0% → 100% |  |  |
| 16 | cambiamento email | 2016-03-16 A | 2016-03-16 A |  | 0% → 100% | 57d → none |  |
| 17 | cambiamento password | 2016-05-18 A | 2016-05-18 A |  | 0% → 100% | 12d → none |  |
| 18 | **sezione: visualizzazione tag** | 2016-05-30 A |  |  | 0% → 75% |  |  |
| 20 | Filtro in base al nome | 2016-05-30 A | 2016-05-30 A |  | 0% → 100% | 3.5d → none | was named Filtro in base genere |
| 21 | Visualizza elenco files | 2016-05-31 A | 2016-05-31 A |  | 0% → 100% | 2.5d → none | was named visualizza elenco di tutti i files |
| 22 | Scarica file singolo |  |  |  |  | 1.5d → 17d | was named scarica zip con xml del tuo account |
| 23 | **area login (richiama WebMethod)** |  | 2016-05-26 A |  | 80% → 100% |  |  |
| 24 | login (implementazione) |  | 2016-05-26 A |  | 80% → 100% | 6.38d → none |  |
| 25 | registrazione nuovo utente (implementazione) |  | 2016-05-26 A |  | 80% → 100% | 6.38d → none |  |
| 26 | password dimenticata (implementazione) |  | 2016-05-26 A |  | 80% → 100% | 6.38d → none |  |
| 27 | **GUI** |  |  |  | 83% → 100% |  |  |
| 33 | sezione visualizza | 2016-03-03 A | 2016-03-03 A |  | 0% → 100% | 66.38d → none |  |
| 35 | **applicazione web** |  | 2016-06-03 → 2016-06-20 (+17d) | 71.5d → 83d | 82% → 96% |  |  |
| 41 | **Area utente** |  | 2016-06-01 → 2016-06-03 (+2d) | 58d → 60d | 88% → 98% | 1.5d → 15d | was named area utente |
| 42 | **sezione: credenziali utente** | 2016-05-27 A |  |  | 0% → 100% |  |  |
| 43 | cambiamento email | 2016-05-30 A | 2016-05-30 → 2016-05-31 A (+1d) | 1d → 2d | 0% → 100% | 3.5d → none |  |
| 44 | cambiamento password | 2016-05-27 A | 2016-05-27 A |  | 0% → 100% | 3.5d → none |  |
| 45 | **sezione: visualizzazione tag (biblioteca xml)** |  | 2016-04-18 → 2016-06-03 (+46d) | 7d → 41d | 93% → 94% |  | was named sezione: visualizzazione tag |
| 46 | Visualizza elenco files |  |  |  |  |  | was named visualizza elenco files |
| 47 | Filtro in base al genere | 2016-04-10 A → 2016-04-12 A (+2d) | 2016-04-13 A → 2016-04-15 A (+2d) |  |  |  | was named Filtro in base genere |
| 48 | Scarica file singolo |  |  |  |  | 33.5d → 49d | was named scarica zip con xml del tuo account |
| 50 | **area login** |  | 2016-05-30 → 2016-05-19 A (-11d) | 48d → 41d | 95% → 100% | 3.5d → none |  |
| 53 | **registrazione nuovo utente (implementazione)** | 2016-04-07 A → 2016-03-24 A (-14d) | 2016-05-30 → 2016-05-19 A (-11d) | 3d → 41d | 67% → 100% | 3.5d → none | constraint finish no earlier than 2016-04-14 → none; resources larovere vittorio; morisco gabriele → none |
| 56 | **GUI** |  | 2016-05-26 → 2016-06-20 (+25d) | 41d → 58d | 69% → 92% |  |  |
| 57 | sezione login |  | 2016-04-29 A → 2016-04-04 A (-25d) | 3d → 1d |  |  | resources larovere vittorio; morisco gabriele → larovere vittorio |
| 58 | nuovo registrazione nuovo utente |  | 2016-04-21 A → 2016-04-19 A (-2d) | 2d → 1d |  |  | resources larovere vittorio; morisco gabriele → larovere vittorio |
| 59 | sezione password dimenticata | 2016-04-04 A → 2016-03-21 A (-14d) | 2016-04-06 A → 2016-03-28 A (-9d) | 2d → 4d |  |  | constraint finish no earlier than 2016-04-07 → start no earlier than 2016-03-23; resources larovere vittorio; morisco gabriele → morisco gabriele |
| 60 | AreaUtente - modifica password | 2016-05-25 A → 2016-04-01 A (-54d) | 2016-05-26 → 2016-04-05 A (-51d) | 2d → 3d | 0% → 100% |  | resources larovere vittorio; morisco gabriele → morisco gabriele |
| 61 | AreaUtente - modifica email | 2016-05-25 A → 2016-03-29 A (-57d) | 2016-05-26 → 2016-03-31 A (-56d) | 2d → 3d | 0% → 100% |  | constraint start no earlier than 2016-05-12 → start no earlier than 2016-03-29; resources morisco gabriele; larovere vittorio → morisco gabriele |
| 62 | Sezione visualizza | 2016-04-14 A → 2016-03-16 A (-29d) | 2016-04-22 A → 2016-03-22 A (-31d) | 2d → 5d |  |  | was named sezione visualizza; constraint finish no earlier than 2016-04-21 → start no earlier than 2016-03-16; resources morisco gabriele; larovere vittorio → morisco gabriele |
| 69 | **Web Service (Web Method):** |  | 2016-05-28 → 2016-06-09 (+12d) | 36d → 44d | 23% → 100% |  |  |
| 70 | Autenticazione |  |  |  |  |  | was named Login (implementazione) |
| 71 | Aggiunta nuovo utente |  |  |  |  |  | was named Iscrizione Nuovo Utente |
| 72 | Recupero Password |  | 2016-04-14 A |  | 75% → 100% |  |  |
| 73 | Modifica E-mail | 2016-05-16 A | 2016-05-16 A |  | 0% → 100% |  | was named AreaUtente - ModificaEmail |
| 74 | Modifica Password | 2016-05-17 A | 2016-05-17 A |  | 0% → 100% |  | was named AreaUtente - ModificaPassword |
| 75 | Ricezione - Risposta Visualizzazione files | 2016-04-15 A | 2016-04-15 A |  | 0% → 100% |  |  |
| 77 | **Installazione Windows Server** | 2016-05-16 A | 2016-05-23 A |  | 0% → 100% | 0d → none |  |
| 78 | Installazione Web Server | 2016-05-16 A | 2016-05-16 A |  | 0% → 100% |  |  |
| 79 | Installazione Web Services | 2016-05-16 A | 2016-05-19 A |  | 0% → 100% |  |  |
| 80 | Installazione Database | 2016-05-20 A | 2016-05-23 A |  | 0% → 100% |  |  |

## Version 8 (saved 2016-06-17)

Last finish stays 2016-06-24. Complete tasks 53 → 59.

Removed: 86 Diagramma Classi

Changed:

| ID | Task | Start | Finish | Complete | Total float | Other |
| --- | --- | --- | --- | --- | --- | --- |
| 1 | **Diesis # Project** |  |  | 96% → 97% |  | was named Spartito XML |
| 81 | **Documentazione** | 2016-02-25 A | 2016-02-25 A | 0% → 100% | 0d → none |  |
| 82 | WBS | 2016-02-25 A | 2016-02-25 A | 0% → 100% |  |  |
| 83 | Depliant | 2016-02-25 A | 2016-02-25 A | 0% → 100% |  |  |
| 84 | Manuale Utente | 2016-02-25 A | 2016-02-25 A | 0% → 100% |  |  |
| 85 | Risorse HW / SW | 2016-02-25 A | 2016-02-25 A | 0% → 100% |  |  |
| 86 | Casi D'uso | 2016-02-25 A | 2016-02-25 A | 0% → 100% |  |  |
| 87 | ER | 2016-02-25 A | 2016-02-25 A | 0% → 100% |  |  |
